# 船厂智能监控项目

Schedule from a web Gantt chart, 2026-05-19 to 2026-05-29.
Saturdays and Sundays are off

## Schedule

| ID | WBS | Task | Duration | Start | Finish | inPeople |
| --- | --- | --- | --- | --- | --- | --- |
| 2 | 1 | 系统设计 | 2d | 2026-05-19 | 2026-05-20 | 陈建炜 |
| 3 | 2 | 系统设计方案评审 | 1d | 2026-05-21 | 2026-05-21 | 陈建炜、贺文飞 |
| 4 | 3 | 测试环境硬件准备（摄像头采购、GPU服务器准备） | 6d | 2026-05-22 | 2026-05-29 | 刘欢、张春林 |
| 5 | 4 | 测试环境基础环境搭建（关系型数据库、向量数据库、对象存储、缓存数据库搭建） | 2d | 2026-05-22 | 2026-05-25 |  |
| 6 | 5 | 系统框架以及表结构创建 | 1d | 2026-05-19 | 2026-05-19 |  |
